# Period1

How a schedule from MS Project changed from version to version. A marks actual dates.

## Version 1 (data date 2024-09-16, saved 2024-07-17, file Period 1.mpp)

| ID | WBS | Task | Duration | Start | Finish | Predecessors | Complete | Total float |
| --- | --- | --- | --- | --- | --- | --- | --- | --- |
| 1 | 1 | **Market Assessment** | 4968.88d? | 2024-07-03 A | 2043-07-20 |  | 97% | 0d |
| 4 |  | Evaluate market | 13.12d | 2024-07-03 A | 2024-07-22 A |  | 100% |  |
| 5 |  | Develop Business opportunity | 8.94d | 2024-07-22 A | 2024-08-02 A | 4 | 100% |  |
| 6 |  | Customer preference study | 30.62d | 2024-08-02 A | 2043-07-20 A | 5 | 100% |  |
| 7 |  | Business evaluation (NPV, etc.) | 5.88d | 2024-09-06 A | 2024-09-16 A | 6 | 100% |  |
| 8 | 2 | **Procurement** | 80d? | 2025-01-21 | 2025-05-13 |  |  | 4719.31d |
| 9 |  | Identify vendors | 7d? | 2025-01-21 | 2025-01-30 | 28, 75 |  | 4726.81d |
| 10 |  | Develop and Issue RFQ | 6d? | 2025-01-21 | 2025-01-29 | 75, 28 |  | 4727.81d |
| 11 |  | Issue sample (production equivalent) | 5d? | 2025-02-14 | 2025-02-21 | 28, 9, 10, 76 |  | 4715.81d |
| 12 |  | Assess RFQ responses and select vendors | 10d? | 2025-04-29 | 2025-05-13 | 80, 16 |  | 4719.31d |
| 13 | 3 | **Supplier Quality** | 47d? | 2025-02-21 | 2025-04-29 |  |  | 4715.81d |
| 14 |  | Perform supplier process capability | 14d? | 2025-02-21 | 2025-03-13 | 11 |  | 4715.81d |
| 15 |  | Approve sample parts | 8d? | 2025-03-13 | 2025-03-25 | 14, 77 |  | 4722.81d |
| 16 |  | Qualify Supplier | 10d? | 2025-04-15 | 2025-04-29 | 79, 15 |  | 4715.81d |
| 17 | 4 | **Design** | 65d? | 2024-09-16 | 2024-12-16 |  |  | 4715.81d |
| 18 |  | Design and development plan | 6d? | 2024-09-16 | 2024-09-24 | 7, 71 |  | 4715.81d |
| 19 |  | Design specs. | 22d? | 2024-09-24 | 2024-10-24 | 18 |  | 4715.81d |
| 20 |  | Identify testing requirements | 10d? | 2024-10-24 | 2024-11-07 | 19, 72, 52 |  | 4723.81d |
| 21 |  | Risk analysis | 10d? | 2024-11-07 | 2024-11-21 | 20 |  | 4723.81d |
| 22 |  | Design labeling | 5d? | 2024-12-03 | 2024-12-10 | 21, 73 |  | 4715.81d |
| 23 |  | Approve design | 4d? | 2024-12-10 | 2024-12-16 | 22 |  | 4715.81d |
| 24 | 5 | **Engineering** | 93d? | 2024-12-16 | 2025-04-24 |  |  | 4715.81d |
| 25 |  | Initial engineering specs. | 5d? | 2024-12-16 | 2024-12-23 | 23 |  | 4715.81d |
| 26 |  | Design verification activities | 7d? | 2024-12-23 | 2025-01-01 | 25, 74 |  | 4715.81d |
| 27 |  | Verification design review | 4d? | 2025-01-01 | 2025-01-07 | 26 |  | 4715.81d |
| 28 |  | Release pre-production specifications | 10d? | 2025-01-07 | 2025-01-21 | 27 |  | 4715.81d |
| 29 |  | Build functional model | 18d? | 2025-01-21 | 2025-02-14 | 28, 75 |  | 4715.81d |
| 30 |  | Design validation activities | 5d? | 2025-03-13 | 2025-03-20 | 77, 29, 14 |  | 4725.81d |
| 31 |  | Validation design review | 4d? | 2025-04-03 | 2025-04-09 | 30, 78 |  | 4715.81d |
| 32 |  | Approve model design | 4d? | 2025-04-09 | 2025-04-15 | 31 |  | 4715.81d |
| 33 |  | Design transfer activities | 7d? | 2025-04-15 | 2025-04-24 | 32, 38, 79 |  | 4715.81d |
| 34 | 6 | **Engineering Quality** | 70d? | 2025-01-21 | 2025-04-29 |  |  | 4715.81d |
| 35 |  | Evaluate design specifications | 10d? | 2025-01-21 | 2025-02-04 | 75, 28 |  | 4723.81d |
| 36 |  | Develop testing protocol for prototype | 8d? | 2025-02-14 | 2025-02-26 | 28, 35, 76 |  | 4726.81d |
| 37 |  | Test prototype | 10d? | 2025-03-13 | 2025-03-27 | 77, 36, 29, 14 |  | 4720.81d |
| 38 |  | Evaluate results of tests and identify weaknesses | 6d? | 2025-04-03 | 2025-04-11 | 78, 37 |  | 4717.81d |
| 39 |  | Product release meetings | 3d? | 2025-04-24 | 2025-04-29 | 33, 38, 32 |  | 4715.81d |
| 40 | 7 | **Manufacturing** | 68.5d? | 2025-03-13 | 2025-06-18 |  |  | 4715.81d |
| 41 |  | Process engineering plan | 15d? | 2025-03-13 | 2025-04-03 | 29, 14, 77 |  | 4715.81d |
| 42 |  | Develop production plan | 6d? | 2025-04-15 | 2025-04-23 | 79, 38, 31, 41 |  | 4719.81d |
| 43 |  | Develop production control plan | 8.5d? | 2025-04-29 | 2025-05-12 | 42, 16, 80 |  | 4715.81d |
| 44 |  | Approve production parts | 5d? | 2025-05-12 | 2025-05-19 | 43 |  | 4715.81d |
| 45 |  | Contracting for deliveries | 8d? | 2025-05-19 | 2025-05-29 | 44, 12 |  | 4715.81d |
| 46 |  | Submit production purchase order | 2d? | 2025-05-29 | 2025-06-02 | 45, 81 |  | 4715.81d |
| 47 |  | Production pilot test | 5d? | 2025-06-02 | 2025-06-09 | 46, 39 |  | 4715.81d |
| 48 |  | Debugging production system | 4d? | 2025-06-09 | 2025-06-13 | 47 |  | 4715.81d |
| 49 |  | Production release | 3d? | 2025-06-13 | 2025-06-18 | 48 |  | 4715.81d |
| 50 | 8 | **Commercialization** | 199.5d? | 2024-09-16 | 2025-06-23 |  |  | 4715.81d |
| 51 |  | Develop preliminary marketing plan | 5d? | 2024-09-16 | 2024-09-23 | 7, 71 |  | 4723.81d |
| 52 |  | Develop marketing program | 15d? | 2024-09-23 | 2024-10-14 | 51 |  | 4723.81d |
| 53 |  | Train sales team | 22d? | 2024-10-24 | 2024-11-25 | 52, 72 |  | 4721.81d |
| 54 |  | Advertising campaign | 28d? | 2024-10-24 | 2024-12-03 | 72, 52 |  | 4715.81d |
| 55 |  | Show functional model at trade show | 3d? | 2025-03-13 | 2025-03-18 | 52, 77, 14, 29 |  | 4727.81d |
| 56 |  | Product launch | 3d? | 2025-06-18 | 2025-06-23 | 49, 53, 54, 55 |  | 4715.81d |
| 57 | 9 | **Project Management** | 246.06d? | 2024-07-03 A | 2025-06-12 |  | 19% | 4722.81d |
| 58 |  | Project Management Period 1 | 26.38d | 2024-07-03 A | 2024-08-08 A |  | 100% |  |
| 59 |  | Project Management Period 2 | 14d? | 2024-09-16 | 2024-10-04 | 58, 71 |  | 4729.81d |
| 60 |  | Project Management Period 3 | 14d? | 2024-10-24 | 2024-11-13 | 72, 59 |  | 4729.81d |
| 61 |  | Project Management Period 4 | 13d? | 2024-12-03 | 2024-12-20 | 60, 73 |  | 4716.81d |
| 62 |  | Project Management Period 5 | 15d? | 2024-12-23 | 2025-01-13 | 74, 61 |  | 4721.81d |
| 63 |  | Project Management Period 6 | 9d? | 2025-01-21 | 2025-02-03 | 62, 75 |  | 4724.81d |
| 64 |  | Project Management Period 7 | 11d? | 2025-02-14 | 2025-03-03 | 76, 63 |  | 4723.81d |
| 65 |  | Project Management Period 8 | 3d? | 2025-03-13 | 2025-03-18 | 64, 77 |  | 4727.81d |
| 66 |  | Project Management Period 9 | 4d? | 2025-04-03 | 2025-04-09 | 78, 65 |  | 4719.81d |
| 67 |  | Project Management Period 10 | 5d? | 2025-04-15 | 2025-04-22 | 66, 79 |  | 4720.81d |
| 68 |  | Project Management Period 11 | 13d? | 2025-04-29 | 2025-05-16 | 80, 67 |  | 4724.31d |
| 69 |  | Project Management Period 12 | 10d? | 2025-05-29 | 2025-06-12 | 68, 81 |  | 4722.81d |
| 70 | 10 | **Milestones** | 199.5d? | 2024-09-16 A | 2025-06-23 |  |  | 4715.81d |
| 71 |  | Milestone 1 | 0d | 2024-09-16 A | 2024-09-16 A | 58, 7 | 100% |  |
| 72 |  | Milestone 2 | 0d? | 2024-10-24 | 2024-10-24 | 19, 52, 59 |  | 4715.81d |

| ID | Task | Duration | Start | Finish | Predecessors | Total float |
| --- | --- | --- | --- | --- | --- | --- |
| 73 | Milestone 3 | 0d? | 2024-12-03 | 2024-12-03 | 60, 54, 53, 21 | 4715.81d |
| 74 | Milestone 4 | 0d? | 2024-12-23 | 2024-12-23 | 25, 61 | 4715.81d |
| 75 | Milestone 5 | 0d? | 2025-01-21 | 2025-01-21 | 62, 28 | 4715.81d |
| 76 | Milestone 6 | 0d? | 2025-02-14 | 2025-02-14 | 29, 35, 10, 9, 63 | 4715.81d |
| 77 | Milestone 7 | 0d? | 2025-03-13 | 2025-03-13 | 64, 14, 36 | 4715.81d |
| 78 | Milestone 8 | 0d? | 2025-04-03 | 2025-04-03 | 30, 41, 15, 65, 55, 37 | 4715.81d |
| 79 | Milestone 9 | 0d? | 2025-04-15 | 2025-04-15 | 66, 38, 32 | 4715.81d |
| 80 | Milestone 10 | 0d? | 2025-04-29 | 2025-04-29 | 42, 39, 16, 67 | 4715.81d |
| 81 | Milestone 11 | 0d? | 2025-05-29 | 2025-05-29 | 68, 45 | 4715.81d |
| 82 | Milestone 12 | 0d? | 2025-06-23 | 2025-06-23 | 69, 56 | 4715.81d |

## Version 2 (data date 2024-10-31, saved 2024-07-17, file Period 2.mpp)

Last finish 2043-07-20 → 2025-06-30 (-6594d). Complete tasks 6 → 12.

Changed:

| ID | Task | Start | Finish | Duration | Complete | Total float | Other |
| --- | --- | --- | --- | --- | --- | --- | --- |
| 1 | **Market Assessment** |  | 2043-07-20 → 2024-09-16 (-6881d) | 4968.88d? → 53.56d? | 97% → 98% | 0d → 204.5d |  |
| 5 | Customer preference study |  | 2043-07-20 A → 2024-09-06 A (-6891d) | 30.62d → 25.62d |  |  |  |
| 7 | **Procurement** | 2025-01-21 → 2025-01-28 (+7d) | 2025-05-13 → 2025-05-20 (+7d) |  |  | 4719.31d → 3.5d |  |
| 8 | Identify vendors | 2025-01-21 → 2025-01-28 (+7d) | 2025-01-30 → 2025-02-06 (+7d) |  |  | 4726.81d → 11d |  |
| 9 | Develop and Issue RFQ | 2025-01-21 → 2025-01-28 (+7d) | 2025-01-29 → 2025-02-05 (+7d) |  |  | 4727.81d → 12d |  |
| 10 | Issue sample (production equivalent) | 2025-02-14 → 2025-02-21 (+7d) | 2025-02-21 → 2025-02-28 (+7d) |  |  | 4715.81d → 0d |  |
| 11 | Assess RFQ responses and select vendors | 2025-04-29 → 2025-05-06 (+7d) | 2025-05-13 → 2025-05-20 (+7d) |  |  | 4719.31d → 3.5d |  |
| 12 | **Supplier Quality** | 2025-02-21 → 2025-02-28 (+7d) | 2025-04-29 → 2025-05-06 (+7d) |  |  | 4715.81d → 0d |  |
| 13 | Perform supplier process capability | 2025-02-21 → 2025-02-28 (+7d) | 2025-03-13 → 2025-03-20 (+7d) |  |  | 4715.81d → 0d |  |
| 14 | Approve sample parts | 2025-03-13 → 2025-03-20 (+7d) | 2025-03-25 → 2025-04-01 (+7d) |  |  | 4722.81d → 7d |  |
| 15 | Qualify Supplier | 2025-04-15 → 2025-04-22 (+7d) | 2025-04-29 → 2025-05-06 (+7d) |  |  | 4715.81d → 0d |  |
| 16 | **Design** | 2024-09-16 A | 2024-12-16 → 2024-12-23 (+7d) | 65d? → 70d? | 0% → 53% | 4715.81d → 0d |  |
| 17 | Design and development plan | 2024-09-16 A | 2024-09-24 → 2024-09-25 A (+1d) | 6d? → 6.88d | 0% → 100% | 4715.81d → none | resources none → Jessie Garoner |
| 18 | Design specs. | 2024-09-24 → 2024-09-25 A (+1d) | 2024-10-24 → 2024-10-31 A (+7d) | 22d? → 26.12d | 0% → 100% | 4715.81d → none | resources none → Jessie Garoner |
| 19 | Identify testing requirements | 2024-10-24 → 2024-10-31 (+7d) | 2024-11-07 → 2024-11-14 (+7d) |  |  | 4723.81d → 8d |  |
| 20 | Risk analysis | 2024-11-07 → 2024-11-14 (+7d) | 2024-11-21 → 2024-11-28 (+7d) |  |  | 4723.81d → 8d |  |
| 21 | Design labeling | 2024-12-03 → 2024-12-10 (+7d) | 2024-12-10 → 2024-12-17 (+7d) |  |  | 4715.81d → 0d |  |
| 22 | Approve design | 2024-12-10 → 2024-12-17 (+7d) | 2024-12-16 → 2024-12-23 (+7d) |  |  | 4715.81d → 0d |  |
| 23 | **Engineering** | 2024-12-16 → 2024-12-23 (+7d) | 2025-04-24 → 2025-05-01 (+7d) |  |  | 4715.81d → 0d |  |
| 24 | Initial engineering specs. | 2024-12-16 → 2024-12-23 (+7d) | 2024-12-23 → 2024-12-30 (+7d) |  |  | 4715.81d → 0d |  |
| 25 | Design verification activities | 2024-12-23 → 2024-12-30 (+7d) | 2025-01-01 → 2025-01-08 (+7d) |  |  | 4715.81d → 0d |  |
| 26 | Verification design review | 2025-01-01 → 2025-01-08 (+7d) | 2025-01-07 → 2025-01-14 (+7d) |  |  | 4715.81d → 0d |  |
| 27 | Release pre-production specifications | 2025-01-07 → 2025-01-14 (+7d) | 2025-01-21 → 2025-01-28 (+7d) |  |  | 4715.81d → 0d |  |
| 28 | Build functional model | 2025-01-21 → 2025-01-28 (+7d) | 2025-02-14 → 2025-02-21 (+7d) |  |  | 4715.81d → 0d |  |
| 29 | Design validation activities | 2025-03-13 → 2025-03-20 (+7d) | 2025-03-20 → 2025-03-27 (+7d) |  |  | 4725.81d → 10d |  |
| 30 | Validation design review | 2025-04-03 → 2025-04-10 (+7d) | 2025-04-09 → 2025-04-16 (+7d) |  |  | 4715.81d → 0d |  |
| 31 | Approve model design | 2025-04-09 → 2025-04-16 (+7d) | 2025-04-15 → 2025-04-22 (+7d) |  |  | 4715.81d → 0d |  |
| 32 | Design transfer activities | 2025-04-15 → 2025-04-22 (+7d) | 2025-04-24 → 2025-05-01 (+7d) |  |  | 4715.81d → 0d |  |
| 33 | **Engineering Quality** | 2025-01-21 → 2025-01-28 (+7d) | 2025-04-29 → 2025-05-06 (+7d) |  |  | 4715.81d → 0d |  |
| 34 | Evaluate design specifications | 2025-01-21 → 2025-01-28 (+7d) | 2025-02-04 → 2025-02-11 (+7d) |  |  | 4723.81d → 8d |  |
| 35 | Develop testing protocol for prototype | 2025-02-14 → 2025-02-21 (+7d) | 2025-02-26 → 2025-03-05 (+7d) |  |  | 4726.81d → 11d |  |
| 36 | Test prototype | 2025-03-13 → 2025-03-20 (+7d) | 2025-03-27 → 2025-04-03 (+7d) |  |  | 4720.81d → 5d |  |
| 37 | Evaluate results of tests and identify weaknesses | 2025-04-03 → 2025-04-10 (+7d) | 2025-04-11 → 2025-04-18 (+7d) |  |  | 4717.81d → 2d |  |
| 38 | Product release meetings | 2025-04-24 → 2025-05-01 (+7d) | 2025-04-29 → 2025-05-06 (+7d) |  |  | 4715.81d → 0d |  |
| 39 | **Manufacturing** | 2025-03-13 → 2025-03-20 (+7d) | 2025-06-18 → 2025-06-25 (+7d) |  |  | 4715.81d → 0d |  |
| 40 | Process engineering plan | 2025-03-13 → 2025-03-20 (+7d) | 2025-04-03 → 2025-04-10 (+7d) |  |  | 4715.81d → 0d |  |
| 41 | Develop production plan | 2025-04-15 → 2025-04-22 (+7d) | 2025-04-23 → 2025-04-30 (+7d) |  |  | 4719.81d → 4d |  |
| 42 | Develop production control plan | 2025-04-29 → 2025-05-06 (+7d) | 2025-05-12 → 2025-05-19 (+7d) |  |  | 4715.81d → 0d |  |
| 43 | Approve production parts | 2025-05-12 → 2025-05-19 (+7d) | 2025-05-19 → 2025-05-26 (+7d) |  |  | 4715.81d → 0d |  |
| 44 | Contracting for deliveries | 2025-05-19 → 2025-05-26 (+7d) | 2025-05-29 → 2025-06-05 (+7d) |  |  | 4715.81d → 0d |  |
| 45 | Submit production purchase order | 2025-05-29 → 2025-06-05 (+7d) | 2025-06-02 → 2025-06-09 (+7d) |  |  | 4715.81d → 0d |  |
| 46 | Production pilot test | 2025-06-02 → 2025-06-09 (+7d) | 2025-06-09 → 2025-06-16 (+7d) |  |  | 4715.81d → 0d |  |
| 47 | Debugging production system | 2025-06-09 → 2025-06-16 (+7d) | 2025-06-13 → 2025-06-20 (+7d) |  |  | 4715.81d → 0d |  |
| 48 | Production release | 2025-06-13 → 2025-06-20 (+7d) | 2025-06-18 → 2025-06-25 (+7d) |  |  | 4715.81d → 0d |  |
| 49 | **Commercialization** | 2024-09-16 A | 2025-06-23 → 2025-06-30 (+7d) | 199.5d? → 204.5d? | 0% → 17% | 4715.81d → 0d |  |
| 50 | Develop preliminary marketing plan | 2024-09-16 A | 2024-09-23 → 2024-09-19 A (-4d) | 5d? → 2.88d | 0% → 100% | 4723.81d → none | resources none → Melodee Beene; Javier Ruddock |
| 51 | Develop marketing program | 2024-09-23 → 2024-09-19 A (-4d) | 2024-10-14 → 2024-10-02 A (-12d) | 15d? → 8.69d | 0% → 100% | 4723.81d → none | resources none → Melodee Beene; Javier Ruddock |
| 52 | Train sales team | 2024-10-24 → 2024-10-31 (+7d) | 2024-11-25 → 2024-12-02 (+7d) |  |  | 4721.81d → 6d |  |
| 53 | Advertising campaign | 2024-10-24 → 2024-10-31 (+7d) | 2024-12-03 → 2024-12-10 (+7d) |  |  | 4715.81d → 0d |  |
| 54 | Show functional model at trade show | 2025-03-13 → 2025-03-20 (+7d) | 2025-03-18 → 2025-03-25 (+7d) |  |  | 4727.81d → 12d |  |
| 55 | Product launch | 2025-06-18 → 2025-06-25 (+7d) | 2025-06-23 → 2025-06-30 (+7d) |  |  | 4715.81d → 0d |  |
| 56 | **Project Management** |  | 2025-06-12 → 2025-06-19 (+7d) | 246.06d? → 251.06d? | 19% → 30% | 4722.81d → 7d |  |
| 58 | Project Management Period 2 | 2024-09-16 A | 2024-10-04 → 2024-10-07 A (+3d) | 14d? → 14.75d | 0% → 100% | 4729.81d → none | resources none → Tari Watrous |
| 59 | Project Management Period 3 | 2024-10-24 → 2024-10-31 (+7d) | 2024-11-13 → 2024-11-20 (+7d) |  |  | 4729.81d → 14d |  |
| 60 | Project Management Period 4 | 2024-12-03 → 2024-12-10 (+7d) | 2024-12-20 → 2024-12-27 (+7d) |  |  | 4716.81d → 1d |  |
| 61 | Project Management Period 5 | 2024-12-23 → 2024-12-30 (+7d) | 2025-01-13 → 2025-01-20 (+7d) |  |  | 4721.81d → 6d |  |
| 62 | Project Management Period 6 | 2025-01-21 → 2025-01-28 (+7d) | 2025-02-03 → 2025-02-10 (+7d) |  |  | 4724.81d → 9d |  |
| 63 | Project Management Period 7 | 2025-02-14 → 2025-02-21 (+7d) | 2025-03-03 → 2025-03-10 (+7d) |  |  | 4723.81d → 8d |  |
| 64 | Project Management Period 8 | 2025-03-13 → 2025-03-20 (+7d) | 2025-03-18 → 2025-03-25 (+7d) |  |  | 4727.81d → 12d |  |
| 65 | Project Management Period 9 | 2025-04-03 → 2025-04-10 (+7d) | 2025-04-09 → 2025-04-16 (+7d) |  |  | 4719.81d → 4d |  |
| 66 | Project Management Period 10 | 2025-04-15 → 2025-04-22 (+7d) | 2025-04-22 → 2025-04-29 (+7d) |  |  | 4720.81d → 5d |  |
| 67 | Project Management Period 11 | 2025-04-29 → 2025-05-06 (+7d) | 2025-05-16 → 2025-05-23 (+7d) |  |  | 4724.31d → 8.5d |  |
| 68 | Project Management Period 12 | 2025-05-29 → 2025-06-05 (+7d) | 2025-06-12 → 2025-06-19 (+7d) |  |  | 4722.81d → 7d |  |
| 69 | **Milestones** |  | 2025-06-23 → 2025-06-30 (+7d) | 199.5d? → 204.5d? |  | 4715.81d → 0d |  |
| 71 | Milestone 2 | 2024-10-24 → 2024-10-31 A (+7d) | 2024-10-24 → 2024-10-31 A (+7d) | 0d? → 0d | 0% → 100% | 4715.81d → none | resources none → Period 2 Training Costs; Period 2 Managerial Action Costs; Period 2 Unallocated Resource Costs |
| 72 | Milestone 3 | 2024-12-03 → 2024-12-10 (+7d) | 2024-12-03 → 2024-12-10 (+7d) |  |  | 4715.81d → 0d |  |
| 73 | Milestone 4 | 2024-12-23 → 2024-12-30 (+7d) | 2024-12-23 → 2024-12-30 (+7d) |  |  | 4715.81d → 0d |  |
| 74 | Milestone 5 | 2025-01-21 → 2025-01-28 (+7d) | 2025-01-21 → 2025-01-28 (+7d) |  |  | 4715.81d → 0d |  |
| 75 | Milestone 6 | 2025-02-14 → 2025-02-21 (+7d) | 2025-02-14 → 2025-02-21 (+7d) |  |  | 4715.81d → 0d |  |
| 76 | Milestone 7 | 2025-03-13 → 2025-03-20 (+7d) | 2025-03-13 → 2025-03-20 (+7d) |  |  | 4715.81d → 0d |  |

| ID | Task | Start | Finish | Total float |
| --- | --- | --- | --- | --- |
| 77 | Milestone 8 | 2025-04-03 → 2025-04-10 (+7d) | 2025-04-03 → 2025-04-10 (+7d) | 4715.81d → 0d |
| 78 | Milestone 9 | 2025-04-15 → 2025-04-22 (+7d) | 2025-04-15 → 2025-04-22 (+7d) | 4715.81d → 0d |
| 79 | Milestone 10 | 2025-04-29 → 2025-05-06 (+7d) | 2025-04-29 → 2025-05-06 (+7d) | 4715.81d → 0d |
| 80 | Milestone 11 | 2025-05-29 → 2025-06-05 (+7d) | 2025-05-29 → 2025-06-05 (+7d) | 4715.81d → 0d |
| 81 | Milestone 12 | 2025-06-23 → 2025-06-30 (+7d) | 2025-06-23 → 2025-06-30 (+7d) | 4715.81d → 0d |

## Version 3 (data date 2024-12-06, saved 2024-07-24, file Period 3.mpp)

Last finish 2025-06-30 → 2025-06-26 (-4d). Complete tasks 12 → 18.

Changed:

| ID | Task | Start | Finish | Duration | Complete | Total float | Other |
| --- | --- | --- | --- | --- | --- | --- | --- |
| 1 | **Market Assessment** |  | 2024-09-16 A | 53.56d? → 53.56d | 98% → 100% | 204.5d → none |  |
| 6 | **Procurement** | 2025-01-28 → 2025-01-24 (-4d) | 2025-05-20 → 2025-05-16 (-4d) |  |  |  |  |
| 7 | Identify vendors | 2025-01-28 → 2025-01-24 (-4d) | 2025-02-06 → 2025-02-04 (-2d) |  |  |  |  |
| 8 | Develop and Issue RFQ | 2025-01-28 → 2025-01-24 (-4d) | 2025-02-05 → 2025-02-03 (-2d) |  |  |  |  |
| 9 | Issue sample (production equivalent) | 2025-02-21 → 2025-02-19 (-2d) | 2025-02-28 → 2025-02-26 (-2d) |  |  |  |  |
| 10 | Assess RFQ responses and select vendors | 2025-05-06 → 2025-05-02 (-4d) | 2025-05-20 → 2025-05-16 (-4d) |  |  |  |  |
| 11 | **Supplier Quality** | 2025-02-28 → 2025-02-26 (-2d) | 2025-05-06 → 2025-05-02 (-4d) |  |  |  |  |
| 12 | Perform supplier process capability | 2025-02-28 → 2025-02-26 (-2d) | 2025-03-20 → 2025-03-18 (-2d) |  |  |  |  |
| 13 | Approve sample parts | 2025-03-20 → 2025-03-18 (-2d) | 2025-04-01 → 2025-03-28 (-4d) |  |  |  |  |
| 14 | Qualify Supplier | 2025-04-22 → 2025-04-18 (-4d) | 2025-05-06 → 2025-05-02 (-4d) |  |  |  |  |
| 15 | **Design** |  | 2024-12-23 → 2024-12-19 (-4d) | 70d? → 67.88d? | 53% → 87% |  |  |
| 18 | Identify testing requirements | 2024-10-31 A | 2024-11-14 → 2024-11-18 A (+4d) | 10d? → 11.88d | 0% → 100% | 8d → none | resources none → Jessie Garoner |
| 19 | Risk analysis | 2024-11-14 → 2024-11-18 A (+4d) | 2024-11-28 → 2024-12-05 A (+7d) | 10d? → 13.38d | 0% → 100% | 8d → none | resources none → Jessie Garoner |
| 20 | Design labeling | 2024-12-10 → 2024-12-06 (-4d) | 2024-12-17 → 2024-12-13 (-4d) |  |  |  |  |
| 21 | Approve design | 2024-12-17 → 2024-12-13 (-4d) | 2024-12-23 → 2024-12-19 (-4d) |  |  |  |  |
| 22 | **Engineering** | 2024-12-23 → 2024-12-19 (-4d) | 2025-05-01 → 2025-04-29 (-2d) |  |  |  |  |
| 23 | Initial engineering specs. | 2024-12-23 → 2024-12-19 (-4d) | 2024-12-30 → 2024-12-26 (-4d) |  |  |  |  |
| 24 | Design verification activities | 2024-12-30 → 2024-12-26 (-4d) | 2025-01-08 → 2025-01-06 (-2d) |  |  |  |  |
| 25 | Verification design review | 2025-01-08 → 2025-01-06 (-2d) | 2025-01-14 → 2025-01-10 (-4d) |  |  |  |  |
| 26 | Release pre-production specifications | 2025-01-14 → 2025-01-10 (-4d) | 2025-01-28 → 2025-01-24 (-4d) |  |  |  |  |
| 27 | Build functional model | 2025-01-28 → 2025-01-24 (-4d) | 2025-02-21 → 2025-02-19 (-2d) |  |  |  |  |
| 28 | Design validation activities | 2025-03-20 → 2025-03-18 (-2d) | 2025-03-27 → 2025-03-25 (-2d) |  |  |  |  |
| 29 | Validation design review | 2025-04-10 → 2025-04-08 (-2d) | 2025-04-16 → 2025-04-14 (-2d) |  |  |  |  |
| 30 | Approve model design | 2025-04-16 → 2025-04-14 (-2d) | 2025-04-22 → 2025-04-18 (-4d) |  |  |  |  |
| 31 | Design transfer activities | 2025-04-22 → 2025-04-18 (-4d) | 2025-05-01 → 2025-04-29 (-2d) |  |  |  |  |
| 32 | **Engineering Quality** | 2025-01-28 → 2025-01-24 (-4d) | 2025-05-06 → 2025-05-02 (-4d) |  |  |  |  |
| 33 | Evaluate design specifications | 2025-01-28 → 2025-01-24 (-4d) | 2025-02-11 → 2025-02-07 (-4d) |  |  |  |  |
| 34 | Develop testing protocol for prototype | 2025-02-21 → 2025-02-19 (-2d) | 2025-03-05 → 2025-03-03 (-2d) |  |  |  |  |
| 35 | Test prototype | 2025-03-20 → 2025-03-18 (-2d) | 2025-04-03 → 2025-04-01 (-2d) |  |  |  |  |
| 36 | Evaluate results of tests and identify weaknesses | 2025-04-10 → 2025-04-08 (-2d) | 2025-04-18 → 2025-04-16 (-2d) |  |  |  |  |
| 37 | Product release meetings | 2025-05-01 → 2025-04-29 (-2d) | 2025-05-06 → 2025-05-02 (-4d) |  |  |  |  |
| 38 | **Manufacturing** | 2025-03-20 → 2025-03-18 (-2d) | 2025-06-25 → 2025-06-23 (-2d) |  |  |  |  |
| 39 | Process engineering plan | 2025-03-20 → 2025-03-18 (-2d) | 2025-04-10 → 2025-04-08 (-2d) |  |  |  |  |
| 40 | Develop production plan | 2025-04-22 → 2025-04-18 (-4d) | 2025-04-30 → 2025-04-28 (-2d) |  |  |  |  |
| 41 | Develop production control plan | 2025-05-06 → 2025-05-02 (-4d) | 2025-05-19 → 2025-05-15 (-4d) |  |  |  |  |
| 42 | Approve production parts | 2025-05-19 → 2025-05-15 (-4d) | 2025-05-26 → 2025-05-22 (-4d) |  |  |  |  |
| 43 | Contracting for deliveries | 2025-05-26 → 2025-05-22 (-4d) | 2025-06-05 → 2025-06-03 (-2d) |  |  |  |  |
| 44 | Submit production purchase order | 2025-06-05 → 2025-06-03 (-2d) | 2025-06-09 → 2025-06-05 (-4d) |  |  |  |  |
| 45 | Production pilot test | 2025-06-09 → 2025-06-05 (-4d) | 2025-06-16 → 2025-06-12 (-4d) |  |  |  |  |
| 46 | Debugging production system | 2025-06-16 → 2025-06-12 (-4d) | 2025-06-20 → 2025-06-18 (-2d) |  |  |  |  |
| 47 | Production release | 2025-06-20 → 2025-06-18 (-2d) | 2025-06-25 → 2025-06-23 (-2d) |  |  |  |  |
| 48 | **Commercialization** |  | 2025-06-30 → 2025-06-26 (-4d) | 204.5d? → 202.38d? | 17% → 90% |  |  |
| 51 | Train sales team | 2024-10-31 A | 2024-12-02 → 2024-12-06 A (+4d) | 22d? → 25.88d | 0% → 100% | 6d → none | resources none → Javier Ruddock |
| 52 | Advertising campaign | 2024-10-31 A | 2024-12-10 → 2024-11-25 A (-15d) | 28d? → 16.38d | 0% → 100% | 0d → none | resources none → Julie Schmitt; Melodee Beene |
| 53 | Show functional model at trade show | 2025-03-20 → 2025-03-18 (-2d) | 2025-03-25 → 2025-03-21 (-4d) |  |  |  |  |
| 54 | Product launch | 2025-06-25 → 2025-06-23 (-2d) | 2025-06-30 → 2025-06-26 (-4d) |  |  |  |  |
| 55 | **Project Management** |  | 2025-06-19 → 2025-06-17 (-2d) | 251.06d? → 248.94d? | 30% → 40% |  |  |
| 58 | Project Management Period 3 | 2024-10-31 A | 2024-11-20 → 2024-11-21 A (+1d) | 14d? → 14.75d | 0% → 100% | 14d → none | resources none → Tari Watrous |
| 59 | Project Management Period 4 | 2024-12-10 → 2024-12-06 (-4d) | 2024-12-27 → 2024-12-25 (-2d) |  |  |  |  |
| 60 | Project Management Period 5 | 2024-12-30 → 2024-12-26 (-4d) | 2025-01-20 → 2025-01-16 (-4d) |  |  |  |  |
| 61 | Project Management Period 6 | 2025-01-28 → 2025-01-24 (-4d) | 2025-02-10 → 2025-02-06 (-4d) |  |  |  |  |
| 62 | Project Management Period 7 | 2025-02-21 → 2025-02-19 (-2d) | 2025-03-10 → 2025-03-06 (-4d) |  |  |  |  |
| 63 | Project Management Period 8 | 2025-03-20 → 2025-03-18 (-2d) | 2025-03-25 → 2025-03-21 (-4d) |  |  |  |  |
| 64 | Project Management Period 9 | 2025-04-10 → 2025-04-08 (-2d) | 2025-04-16 → 2025-04-14 (-2d) |  |  |  |  |
| 65 | Project Management Period 10 | 2025-04-22 → 2025-04-18 (-4d) | 2025-04-29 → 2025-04-25 (-4d) |  |  |  |  |
| 66 | Project Management Period 11 | 2025-05-06 → 2025-05-02 (-4d) | 2025-05-23 → 2025-05-21 (-2d) |  |  |  |  |
| 67 | Project Management Period 12 | 2025-06-05 → 2025-06-03 (-2d) | 2025-06-19 → 2025-06-17 (-2d) |  |  |  |  |
| 68 | **Milestones** |  | 2025-06-30 → 2025-06-26 (-4d) | 204.5d? → 202.38d? |  |  |  |
| 71 | Milestone 3 | 2024-12-10 → 2024-12-06 A (-4d) | 2024-12-10 → 2024-12-06 A (-4d) | 0d? → 0d | 0% → 100% | 0d → none | resources none → Period 3 Training Costs; Period 3 Managerial Action Costs; Period 3 Unallocated Resource Costs |
| 72 | Milestone 4 | 2024-12-30 → 2024-12-26 (-4d) | 2024-12-30 → 2024-12-26 (-4d) |  |  |  |  |
| 73 | Milestone 5 | 2025-01-28 → 2025-01-24 (-4d) | 2025-01-28 → 2025-01-24 (-4d) |  |  |  |  |
| 74 | Milestone 6 | 2025-02-21 → 2025-02-19 (-2d) | 2025-02-21 → 2025-02-19 (-2d) |  |  |  |  |
| 75 | Milestone 7 | 2025-03-20 → 2025-03-18 (-2d) | 2025-03-20 → 2025-03-18 (-2d) |  |  |  |  |
| 76 | Milestone 8 | 2025-04-10 → 2025-04-08 (-2d) | 2025-04-10 → 2025-04-08 (-2d) |  |  |  |  |
| 77 | Milestone 9 | 2025-04-22 → 2025-04-18 (-4d) | 2025-04-22 → 2025-04-18 (-4d) |  |  |  |  |
| 78 | Milestone 10 | 2025-05-06 → 2025-05-02 (-4d) | 2025-05-06 → 2025-05-02 (-4d) |  |  |  |  |
| 79 | Milestone 11 | 2025-06-05 → 2025-06-03 (-2d) | 2025-06-05 → 2025-06-03 (-2d) |  |  |  |  |
| 80 | Milestone 12 | 2025-06-30 → 2025-06-26 (-4d) | 2025-06-30 → 2025-06-26 (-4d) |  |  |  |  |

## Version 4 (data date 2024-12-31, saved 2024-07-24, file Period 4.mpp)

Last finish 2025-06-26 → 2025-07-01 (+5d). Complete tasks 18 → 23.

Changed:

| ID | Task | Start | Finish | Duration | Complete | Total float | Other |
| --- | --- | --- | --- | --- | --- | --- | --- |
| 6 | **Procurement** | 2025-01-24 → 2025-01-29 (+5d) | 2025-05-16 → 2025-05-21 (+5d) |  |  |  |  |
| 7 | Identify vendors | 2025-01-24 → 2025-01-29 (+5d) | 2025-02-04 → 2025-02-07 (+3d) |  |  |  |  |
| 8 | Develop and Issue RFQ | 2025-01-24 → 2025-01-29 (+5d) | 2025-02-03 → 2025-02-06 (+3d) |  |  |  |  |
| 9 | Issue sample (production equivalent) | 2025-02-19 → 2025-02-24 (+5d) | 2025-02-26 → 2025-03-03 (+5d) |  |  |  |  |
| 10 | Assess RFQ responses and select vendors | 2025-05-02 → 2025-05-07 (+5d) | 2025-05-16 → 2025-05-21 (+5d) |  |  |  |  |
| 11 | **Supplier Quality** | 2025-02-26 → 2025-03-03 (+5d) | 2025-05-02 → 2025-05-07 (+5d) |  |  |  |  |
| 12 | Perform supplier process capability | 2025-02-26 → 2025-03-03 (+5d) | 2025-03-18 → 2025-03-21 (+3d) |  |  |  |  |
| 13 | Approve sample parts | 2025-03-18 → 2025-03-21 (+3d) | 2025-03-28 → 2025-04-02 (+5d) |  |  |  |  |
| 14 | Qualify Supplier | 2025-04-18 → 2025-04-23 (+5d) | 2025-05-02 → 2025-05-07 (+5d) |  |  |  |  |
| 15 | **Design** |  | 2024-12-19 → 2024-12-24 A (+5d) | 67.88d? → 70.38d | 87% → 100% | 0d → none |  |
| 20 | Design labeling | 2024-12-06 A | 2024-12-13 → 2024-12-16 A (+3d) | 5d? → 6.38d | 0% → 100% | 0d → none | resources none → Ted Zollinger |
| 21 | Approve design | 2024-12-13 → 2024-12-16 A (+3d) | 2024-12-19 → 2024-12-24 A (+5d) | 4d? → 5.12d | 0% → 100% | 0d → none | resources none → Ted Zollinger |
| 22 | **Engineering** | 2024-12-19 → 2024-12-24 A (+5d) | 2025-04-29 → 2025-05-02 (+3d) | 93d? → 93.75d? | 0% → 9% |  |  |
| 23 | Initial engineering specs. | 2024-12-19 → 2024-12-24 A (+5d) | 2024-12-26 → 2024-12-31 A (+5d) | 5d? → 5.75d | 0% → 100% | 0d → none | resources none → Tyrone Sahota |
| 24 | Design verification activities | 2024-12-26 → 2024-12-31 (+5d) | 2025-01-06 → 2025-01-09 (+3d) |  |  |  |  |
| 25 | Verification design review | 2025-01-06 → 2025-01-09 (+3d) | 2025-01-10 → 2025-01-15 (+5d) |  |  |  |  |
| 26 | Release pre-production specifications | 2025-01-10 → 2025-01-15 (+5d) | 2025-01-24 → 2025-01-29 (+5d) |  |  |  |  |
| 27 | Build functional model | 2025-01-24 → 2025-01-29 (+5d) | 2025-02-19 → 2025-02-24 (+5d) |  |  |  |  |
| 28 | Design validation activities | 2025-03-18 → 2025-03-21 (+3d) | 2025-03-25 → 2025-03-28 (+3d) |  |  |  |  |
| 29 | Validation design review | 2025-04-08 → 2025-04-11 (+3d) | 2025-04-14 → 2025-04-17 (+3d) |  |  |  |  |
| 30 | Approve model design | 2025-04-14 → 2025-04-17 (+3d) | 2025-04-18 → 2025-04-23 (+5d) |  |  |  |  |
| 31 | Design transfer activities | 2025-04-18 → 2025-04-23 (+5d) | 2025-04-29 → 2025-05-02 (+3d) |  |  |  |  |
| 32 | **Engineering Quality** | 2025-01-24 → 2025-01-29 (+5d) | 2025-05-02 → 2025-05-07 (+5d) |  |  |  |  |
| 33 | Evaluate design specifications | 2025-01-24 → 2025-01-29 (+5d) | 2025-02-07 → 2025-02-12 (+5d) |  |  |  |  |
| 34 | Develop testing protocol for prototype | 2025-02-19 → 2025-02-24 (+5d) | 2025-03-03 → 2025-03-06 (+3d) |  |  |  |  |
| 35 | Test prototype | 2025-03-18 → 2025-03-21 (+3d) | 2025-04-01 → 2025-04-04 (+3d) |  |  |  |  |
| 36 | Evaluate results of tests and identify weaknesses | 2025-04-08 → 2025-04-11 (+3d) | 2025-04-16 → 2025-04-21 (+5d) |  |  |  |  |
| 37 | Product release meetings | 2025-04-29 → 2025-05-02 (+3d) | 2025-05-02 → 2025-05-07 (+5d) |  |  |  |  |
| 38 | **Manufacturing** | 2025-03-18 → 2025-03-21 (+3d) | 2025-06-23 → 2025-06-26 (+3d) |  |  |  |  |
| 39 | Process engineering plan | 2025-03-18 → 2025-03-21 (+3d) | 2025-04-08 → 2025-04-11 (+3d) |  |  |  |  |
| 40 | Develop production plan | 2025-04-18 → 2025-04-23 (+5d) | 2025-04-28 → 2025-05-01 (+3d) |  |  |  |  |
| 41 | Develop production control plan | 2025-05-02 → 2025-05-07 (+5d) | 2025-05-15 → 2025-05-20 (+5d) |  |  |  |  |
| 42 | Approve production parts | 2025-05-15 → 2025-05-20 (+5d) | 2025-05-22 → 2025-05-27 (+5d) |  |  |  |  |
| 43 | Contracting for deliveries | 2025-05-22 → 2025-05-27 (+5d) | 2025-06-03 → 2025-06-06 (+3d) |  |  |  |  |
| 44 | Submit production purchase order | 2025-06-03 → 2025-06-06 (+3d) | 2025-06-05 → 2025-06-10 (+5d) |  |  |  |  |
| 45 | Production pilot test | 2025-06-05 → 2025-06-10 (+5d) | 2025-06-12 → 2025-06-17 (+5d) |  |  |  |  |
| 46 | Debugging production system | 2025-06-12 → 2025-06-17 (+5d) | 2025-06-18 → 2025-06-23 (+5d) |  |  |  |  |
| 47 | Production release | 2025-06-18 → 2025-06-23 (+5d) | 2025-06-23 → 2025-06-26 (+3d) |  |  |  |  |
| 48 | **Commercialization** |  | 2025-06-26 → 2025-07-01 (+5d) | 202.38d? → 205.62d? |  |  |  |
| 53 | Show functional model at trade show | 2025-03-18 → 2025-03-21 (+3d) | 2025-03-21 → 2025-03-26 (+5d) |  |  |  |  |
| 54 | Product launch | 2025-06-23 → 2025-06-26 (+3d) | 2025-06-26 → 2025-07-01 (+5d) |  |  |  |  |
| 55 | **Project Management** |  | 2025-06-17 → 2025-06-20 (+3d) | 248.94d? → 252.19d? | 40% → 50% |  |  |
| 59 | Project Management Period 4 | 2024-12-06 A | 2024-12-25 → 2024-12-26 A (+1d) | 13d? → 13.75d | 0% → 100% | 1d → none | resources none → Tari Watrous |
| 60 | Project Management Period 5 | 2024-12-26 → 2024-12-31 (+5d) | 2025-01-16 → 2025-01-21 (+5d) |  |  |  |  |
| 61 | Project Management Period 6 | 2025-01-24 → 2025-01-29 (+5d) | 2025-02-06 → 2025-02-11 (+5d) |  |  |  |  |
| 62 | Project Management Period 7 | 2025-02-19 → 2025-02-24 (+5d) | 2025-03-06 → 2025-03-11 (+5d) |  |  |  |  |
| 63 | Project Management Period 8 | 2025-03-18 → 2025-03-21 (+3d) | 2025-03-21 → 2025-03-26 (+5d) |  |  |  |  |
| 64 | Project Management Period 9 | 2025-04-08 → 2025-04-11 (+3d) | 2025-04-14 → 2025-04-17 (+3d) |  |  |  |  |
| 65 | Project Management Period 10 | 2025-04-18 → 2025-04-23 (+5d) | 2025-04-25 → 2025-04-30 (+5d) |  |  |  |  |
| 66 | Project Management Period 11 | 2025-05-02 → 2025-05-07 (+5d) | 2025-05-21 → 2025-05-26 (+5d) |  |  |  |  |
| 67 | Project Management Period 12 | 2025-06-03 → 2025-06-06 (+3d) | 2025-06-17 → 2025-06-20 (+3d) |  |  |  |  |
| 68 | **Milestones** |  | 2025-06-26 → 2025-07-01 (+5d) | 202.38d? → 205.62d? |  |  |  |
| 72 | Milestone 4 | 2024-12-26 → 2024-12-31 A (+5d) | 2024-12-26 → 2024-12-31 A (+5d) | 0d? → 0d | 0% → 100% | 0d → none | resources none → Period 4 Training Costs; Period 4 Managerial Action Costs; Period 4 Unallocated Resource Costs |
| 73 | Milestone 5 | 2025-01-24 → 2025-01-29 (+5d) | 2025-01-24 → 2025-01-29 (+5d) |  |  |  |  |
| 74 | Milestone 6 | 2025-02-19 → 2025-02-24 (+5d) | 2025-02-19 → 2025-02-24 (+5d) |  |  |  |  |
| 75 | Milestone 7 | 2025-03-18 → 2025-03-21 (+3d) | 2025-03-18 → 2025-03-21 (+3d) |  |  |  |  |
| 76 | Milestone 8 | 2025-04-08 → 2025-04-11 (+3d) | 2025-04-08 → 2025-04-11 (+3d) |  |  |  |  |
| 77 | Milestone 9 | 2025-04-18 → 2025-04-23 (+5d) | 2025-04-18 → 2025-04-23 (+5d) |  |  |  |  |
| 78 | Milestone 10 | 2025-05-02 → 2025-05-07 (+5d) | 2025-05-02 → 2025-05-07 (+5d) |  |  |  |  |
| 79 | Milestone 11 | 2025-06-03 → 2025-06-06 (+3d) | 2025-06-03 → 2025-06-06 (+3d) |  |  |  |  |
| 80 | Milestone 12 | 2025-06-26 → 2025-07-01 (+5d) | 2025-06-26 → 2025-07-01 (+5d) |  |  |  |  |

## Version 5 (data date 2025-01-22, saved 2024-07-24, file Period 5.mpp)

Last finish 2025-07-01 → 2025-06-24 (-7d). Complete tasks 23 → 28.

Changed:

| ID | Task | Start | Finish | Duration | Complete | Total float | Other |
| --- | --- | --- | --- | --- | --- | --- | --- |
| 6 | **Procurement** | 2025-01-29 → 2025-01-22 (-7d) | 2025-05-21 → 2025-05-14 (-7d) |  |  |  |  |
| 7 | Identify vendors | 2025-01-29 → 2025-01-22 (-7d) | 2025-02-07 → 2025-01-31 (-7d) |  |  |  |  |
| 8 | Develop and Issue RFQ | 2025-01-29 → 2025-01-22 (-7d) | 2025-02-06 → 2025-01-30 (-7d) |  |  |  |  |
| 9 | Issue sample (production equivalent) | 2025-02-24 → 2025-02-17 (-7d) | 2025-03-03 → 2025-02-24 (-7d) |  |  |  |  |
| 10 | Assess RFQ responses and select vendors | 2025-05-07 → 2025-04-30 (-7d) | 2025-05-21 → 2025-05-14 (-7d) |  |  |  |  |
| 11 | **Supplier Quality** | 2025-03-03 → 2025-02-24 (-7d) | 2025-05-07 → 2025-04-30 (-7d) |  |  |  |  |
| 12 | Perform supplier process capability | 2025-03-03 → 2025-02-24 (-7d) | 2025-03-21 → 2025-03-14 (-7d) |  |  |  |  |
| 13 | Approve sample parts | 2025-03-21 → 2025-03-14 (-7d) | 2025-04-02 → 2025-03-26 (-7d) |  |  |  |  |
| 14 | Qualify Supplier | 2025-04-23 → 2025-04-16 (-7d) | 2025-05-07 → 2025-04-30 (-7d) |  |  |  |  |
| 22 | **Engineering** |  | 2025-05-02 → 2025-04-25 (-7d) | 93.75d? → 88.62d? | 9% → 33% |  |  |
| 24 | Design verification activities | 2024-12-31 A | 2025-01-09 → 2025-01-06 A (-3d) | 7d? → 4.19d | 0% → 100% | 0d → none | resources none → Ted Zollinger; Tyrone Sahota |
| 25 | Verification design review | 2025-01-09 → 2025-01-07 A (-2d) | 2025-01-15 → 2025-01-09 A (-6d) | 4d? → 2.38d | 0% → 100% | 0d → none | resources none → Ted Zollinger; Tyrone Sahota |
| 26 | Release pre-production specifications | 2025-01-15 → 2025-01-09 A (-6d) | 2025-01-29 → 2025-01-17 A (-12d) | 10d? → 6.12d | 0% → 100% | 0d → none | resources none → Tyrone Sahota; Ted Zollinger |
| 27 | Build functional model | 2025-01-29 → 2025-01-22 (-7d) | 2025-02-24 → 2025-02-17 (-7d) |  |  |  |  |
| 28 | Design validation activities | 2025-03-21 → 2025-03-14 (-7d) | 2025-03-28 → 2025-03-21 (-7d) |  |  |  |  |
| 29 | Validation design review | 2025-04-11 → 2025-04-04 (-7d) | 2025-04-17 → 2025-04-10 (-7d) |  |  |  |  |
| 30 | Approve model design | 2025-04-17 → 2025-04-10 (-7d) | 2025-04-23 → 2025-04-16 (-7d) |  |  |  |  |
| 31 | Design transfer activities | 2025-04-23 → 2025-04-16 (-7d) | 2025-05-02 → 2025-04-25 (-7d) |  |  |  |  |
| 32 | **Engineering Quality** | 2025-01-29 → 2025-01-22 (-7d) | 2025-05-07 → 2025-04-30 (-7d) |  |  |  |  |
| 33 | Evaluate design specifications | 2025-01-29 → 2025-01-22 (-7d) | 2025-02-12 → 2025-02-05 (-7d) |  |  |  |  |
| 34 | Develop testing protocol for prototype | 2025-02-24 → 2025-02-17 (-7d) | 2025-03-06 → 2025-02-27 (-7d) |  |  |  |  |
| 35 | Test prototype | 2025-03-21 → 2025-03-14 (-7d) | 2025-04-04 → 2025-03-28 (-7d) |  |  |  |  |
| 36 | Evaluate results of tests and identify weaknesses | 2025-04-11 → 2025-04-04 (-7d) | 2025-04-21 → 2025-04-14 (-7d) |  |  |  |  |
| 37 | Product release meetings | 2025-05-02 → 2025-04-25 (-7d) | 2025-05-07 → 2025-04-30 (-7d) |  |  |  |  |
| 38 | **Manufacturing** | 2025-03-21 → 2025-03-14 (-7d) | 2025-06-26 → 2025-06-19 (-7d) |  |  |  |  |
| 39 | Process engineering plan | 2025-03-21 → 2025-03-14 (-7d) | 2025-04-11 → 2025-04-04 (-7d) |  |  |  |  |
| 40 | Develop production plan | 2025-04-23 → 2025-04-16 (-7d) | 2025-05-01 → 2025-04-24 (-7d) |  |  |  |  |
| 41 | Develop production control plan | 2025-05-07 → 2025-04-30 (-7d) | 2025-05-20 → 2025-05-13 (-7d) |  |  |  |  |
| 42 | Approve production parts | 2025-05-20 → 2025-05-13 (-7d) | 2025-05-27 → 2025-05-20 (-7d) |  |  |  |  |
| 43 | Contracting for deliveries | 2025-05-27 → 2025-05-20 (-7d) | 2025-06-06 → 2025-05-30 (-7d) |  |  |  |  |
| 44 | Submit production purchase order | 2025-06-06 → 2025-05-30 (-7d) | 2025-06-10 → 2025-06-03 (-7d) |  |  |  |  |
| 45 | Production pilot test | 2025-06-10 → 2025-06-03 (-7d) | 2025-06-17 → 2025-06-10 (-7d) |  |  |  |  |
| 46 | Debugging production system | 2025-06-17 → 2025-06-10 (-7d) | 2025-06-23 → 2025-06-16 (-7d) |  |  |  |  |
| 47 | Production release | 2025-06-23 → 2025-06-16 (-7d) | 2025-06-26 → 2025-06-19 (-7d) |  |  |  |  |
| 48 | **Commercialization** |  | 2025-07-01 → 2025-06-24 (-7d) | 205.62d? → 200.5d? |  |  |  |
| 53 | Show functional model at trade show | 2025-03-21 → 2025-03-14 (-7d) | 2025-03-26 → 2025-03-19 (-7d) |  |  |  |  |
| 54 | Product launch | 2025-06-26 → 2025-06-19 (-7d) | 2025-07-01 → 2025-06-24 (-7d) |  |  |  |  |
| 55 | **Project Management** |  | 2025-06-20 → 2025-06-13 (-7d) | 252.19d? → 247.06d? | 50% → 61% |  |  |
| 60 | Project Management Period 5 | 2024-12-31 A | 2025-01-21 → 2025-01-22 A (+1d) | 15d? → 15.88d | 0% → 100% | 6d → none | resources none → Tari Watrous |
| 61 | Project Management Period 6 | 2025-01-29 → 2025-01-22 (-7d) | 2025-02-11 → 2025-02-04 (-7d) |  |  |  |  |
| 62 | Project Management Period 7 | 2025-02-24 → 2025-02-17 (-7d) | 2025-03-11 → 2025-03-04 (-7d) |  |  |  |  |
| 63 | Project Management Period 8 | 2025-03-21 → 2025-03-14 (-7d) | 2025-03-26 → 2025-03-19 (-7d) |  |  |  |  |
| 64 | Project Management Period 9 | 2025-04-11 → 2025-04-04 (-7d) | 2025-04-17 → 2025-04-10 (-7d) |  |  |  |  |
| 65 | Project Management Period 10 | 2025-04-23 → 2025-04-16 (-7d) | 2025-04-30 → 2025-04-23 (-7d) |  |  |  |  |
| 66 | Project Management Period 11 | 2025-05-07 → 2025-04-30 (-7d) | 2025-05-26 → 2025-05-19 (-7d) |  |  |  |  |
| 67 | Project Management Period 12 | 2025-06-06 → 2025-05-30 (-7d) | 2025-06-20 → 2025-06-13 (-7d) |  |  |  |  |
| 68 | **Milestones** |  | 2025-07-01 → 2025-06-24 (-7d) | 205.62d? → 200.5d? |  |  |  |
| 73 | Milestone 5 | 2025-01-29 → 2025-01-22 A (-7d) | 2025-01-29 → 2025-01-22 A (-7d) | 0d? → 0d | 0% → 100% | 0d → none | resources none → Period 5 Training Costs; Period 5 Managerial Action Costs; Period 5 Unallocated Resource Costs |
| 74 | Milestone 6 | 2025-02-24 → 2025-02-17 (-7d) | 2025-02-24 → 2025-02-17 (-7d) |  |  |  |  |
| 75 | Milestone 7 | 2025-03-21 → 2025-03-14 (-7d) | 2025-03-21 → 2025-03-14 (-7d) |  |  |  |  |
| 76 | Milestone 8 | 2025-04-11 → 2025-04-04 (-7d) | 2025-04-11 → 2025-04-04 (-7d) |  |  |  |  |
| 77 | Milestone 9 | 2025-04-23 → 2025-04-16 (-7d) | 2025-04-23 → 2025-04-16 (-7d) |  |  |  |  |
| 78 | Milestone 10 | 2025-05-07 → 2025-04-30 (-7d) | 2025-05-07 → 2025-04-30 (-7d) |  |  |  |  |
| 79 | Milestone 11 | 2025-06-06 → 2025-05-30 (-7d) | 2025-06-06 → 2025-05-30 (-7d) |  |  |  |  |
| 80 | Milestone 12 | 2025-07-01 → 2025-06-24 (-7d) | 2025-07-01 → 2025-06-24 (-7d) |  |  |  |  |

## Version 6 (data date 2025-02-25, saved 2024-07-31, file Period 6.mpp)

Last finish 2025-06-24 → 2025-07-01 (+7d). Complete tasks 28 → 34.

Changed:

| ID | Task | Start | Finish | Duration | Complete | Total float | Other |
| --- | --- | --- | --- | --- | --- | --- | --- |
| 6 | **Procurement** | 2025-01-22 → 2025-02-05 A (+14d) | 2025-05-14 → 2025-05-22 (+8d) | 80d? → 76.12d? | 0% → 48% |  |  |
| 7 | Identify vendors | 2025-01-22 → 2025-02-05 A (+14d) | 2025-01-31 → 2025-02-14 A (+14d) | 7d? → 7.62d | 0% → 100% | 11d → none | resources none → Tari Watrous |
| 8 | Develop and Issue RFQ | 2025-01-22 → 2025-02-14 A (+23d) | 2025-01-30 → 2025-02-25 A (+26d) | 6d? → 6.5d | 0% → 100% | 12d → none | resources none → Tari Watrous |
| 9 | Issue sample (production equivalent) | 2025-02-17 → 2025-02-25 (+8d) | 2025-02-24 → 2025-03-04 (+8d) |  |  |  |  |
| 10 | Assess RFQ responses and select vendors | 2025-04-30 → 2025-05-08 (+8d) | 2025-05-14 → 2025-05-22 (+8d) |  |  |  |  |
| 11 | **Supplier Quality** | 2025-02-24 → 2025-03-04 (+8d) | 2025-04-30 → 2025-05-08 (+8d) |  |  |  |  |
| 12 | Perform supplier process capability | 2025-02-24 → 2025-03-04 (+8d) | 2025-03-14 → 2025-03-24 (+10d) |  |  |  |  |
| 13 | Approve sample parts | 2025-03-14 → 2025-03-24 (+10d) | 2025-03-26 → 2025-04-03 (+8d) |  |  |  |  |
| 14 | Qualify Supplier | 2025-04-16 → 2025-04-24 (+8d) | 2025-04-30 → 2025-05-08 (+8d) |  |  |  |  |
| 22 | **Engineering** |  | 2025-04-25 → 2025-05-05 (+10d) | 88.62d? → 94.25d? | 33% → 67% |  |  |
| 27 | Build functional model | 2025-01-22 A | 2025-02-17 → 2025-02-21 A (+4d) | 18d? → 22.12d | 0% → 100% | 0d → none | resources none → Tyrone Sahota |
| 28 | Design validation activities | 2025-03-14 → 2025-03-24 (+10d) | 2025-03-21 → 2025-03-31 (+10d) |  |  |  |  |
| 29 | Validation design review | 2025-04-04 → 2025-04-14 (+10d) | 2025-04-10 → 2025-04-18 (+8d) |  |  |  |  |
| 30 | Approve model design | 2025-04-10 → 2025-04-18 (+8d) | 2025-04-16 → 2025-04-24 (+8d) |  |  |  |  |
| 31 | Design transfer activities | 2025-04-16 → 2025-04-24 (+8d) | 2025-04-25 → 2025-05-05 (+10d) |  |  |  |  |
| 32 | **Engineering Quality** | 2025-01-22 A | 2025-04-30 → 2025-05-08 (+8d) | 70d? → 75.62d? | 0% → 31% |  |  |
| 33 | Evaluate design specifications | 2025-01-22 A | 2025-02-05 → 2025-02-07 A (+2d) | 10d? → 12.25d | 0% → 100% | 8d → none | resources none → Ted Zollinger |
| 34 | Develop testing protocol for prototype | 2025-02-17 → 2025-02-25 (+8d) | 2025-02-27 → 2025-03-07 (+8d) |  |  |  |  |
| 35 | Test prototype | 2025-03-14 → 2025-03-24 (+10d) | 2025-03-28 → 2025-04-07 (+10d) |  |  |  |  |
| 36 | Evaluate results of tests and identify weaknesses | 2025-04-04 → 2025-04-14 (+10d) | 2025-04-14 → 2025-04-22 (+8d) |  |  |  |  |
| 37 | Product release meetings | 2025-04-25 → 2025-05-05 (+10d) | 2025-04-30 → 2025-05-08 (+8d) |  |  |  |  |
| 38 | **Manufacturing** | 2025-03-14 → 2025-03-24 (+10d) | 2025-06-19 → 2025-06-26 (+7d) |  |  |  |  |
| 39 | Process engineering plan | 2025-03-14 → 2025-03-24 (+10d) | 2025-04-04 → 2025-04-14 (+10d) |  |  |  |  |
| 40 | Develop production plan | 2025-04-16 → 2025-04-24 (+8d) | 2025-04-24 → 2025-05-02 (+8d) |  |  |  |  |
| 41 | Develop production control plan | 2025-04-30 → 2025-05-08 (+8d) | 2025-05-13 → 2025-05-20 (+7d) |  |  |  |  |
| 42 | Approve production parts | 2025-05-13 → 2025-05-20 (+7d) | 2025-05-20 → 2025-05-27 (+7d) |  |  |  |  |
| 43 | Contracting for deliveries | 2025-05-20 → 2025-05-27 (+7d) | 2025-05-30 → 2025-06-06 (+7d) |  |  |  |  |
| 44 | Submit production purchase order | 2025-05-30 → 2025-06-06 (+7d) | 2025-06-03 → 2025-06-10 (+7d) |  |  |  |  |
| 45 | Production pilot test | 2025-06-03 → 2025-06-10 (+7d) | 2025-06-10 → 2025-06-17 (+7d) |  |  |  |  |
| 46 | Debugging production system | 2025-06-10 → 2025-06-17 (+7d) | 2025-06-16 → 2025-06-23 (+7d) |  |  |  |  |
| 47 | Production release | 2025-06-16 → 2025-06-23 (+7d) | 2025-06-19 → 2025-06-26 (+7d) |  |  |  |  |
| 48 | **Commercialization** |  | 2025-06-24 → 2025-07-01 (+7d) | 200.5d? → 206.12d? |  |  |  |
| 53 | Show functional model at trade show | 2025-03-14 → 2025-03-24 (+10d) | 2025-03-19 → 2025-03-27 (+8d) |  |  |  |  |
| 54 | Product launch | 2025-06-19 → 2025-06-26 (+7d) | 2025-06-24 → 2025-07-01 (+7d) |  |  |  |  |
| 55 | **Project Management** |  | 2025-06-13 → 2025-06-20 (+7d) | 247.06d? → 252.69d? | 61% → 67% |  |  |
| 61 | Project Management Period 6 | 2025-01-22 A | 2025-02-04 → 2025-02-05 A (+1d) | 9d? → 9.5d | 0% → 100% | 9d → none | resources none → Tari Watrous |
| 62 | Project Management Period 7 | 2025-02-17 → 2025-02-25 (+8d) | 2025-03-04 → 2025-03-12 (+8d) |  |  |  |  |
| 63 | Project Management Period 8 | 2025-03-14 → 2025-03-24 (+10d) | 2025-03-19 → 2025-03-27 (+8d) |  |  |  |  |
| 64 | Project Management Period 9 | 2025-04-04 → 2025-04-14 (+10d) | 2025-04-10 → 2025-04-18 (+8d) |  |  |  |  |
| 65 | Project Management Period 10 | 2025-04-16 → 2025-04-24 (+8d) | 2025-04-23 → 2025-05-01 (+8d) |  |  |  |  |
| 66 | Project Management Period 11 | 2025-04-30 → 2025-05-08 (+8d) | 2025-05-19 → 2025-05-27 (+8d) |  |  |  |  |
| 67 | Project Management Period 12 | 2025-05-30 → 2025-06-06 (+7d) | 2025-06-13 → 2025-06-20 (+7d) |  |  |  |  |
| 68 | **Milestones** |  | 2025-06-24 → 2025-07-01 (+7d) | 200.5d? → 206.12d? |  |  |  |
| 74 | Milestone 6 | 2025-02-17 → 2025-02-25 A (+8d) | 2025-02-17 → 2025-02-25 A (+8d) | 0d? → 0d | 0% → 100% | 0d → none | resources none → Period 6 Training Costs; Period 6 Managerial Action Costs; Period 6 Unallocated Resource Costs |
| 75 | Milestone 7 | 2025-03-14 → 2025-03-24 (+10d) | 2025-03-14 → 2025-03-24 (+10d) |  |  |  |  |
| 76 | Milestone 8 | 2025-04-04 → 2025-04-14 (+10d) | 2025-04-04 → 2025-04-14 (+10d) |  |  |  |  |
| 77 | Milestone 9 | 2025-04-16 → 2025-04-24 (+8d) | 2025-04-16 → 2025-04-24 (+8d) |  |  |  |  |
| 78 | Milestone 10 | 2025-04-30 → 2025-05-08 (+8d) | 2025-04-30 → 2025-05-08 (+8d) |  |  |  |  |
| 79 | Milestone 11 | 2025-05-30 → 2025-06-06 (+7d) | 2025-05-30 → 2025-06-06 (+7d) |  |  |  |  |
| 80 | Milestone 12 | 2025-06-24 → 2025-07-01 (+7d) | 2025-06-24 → 2025-07-01 (+7d) |  |  |  |  |
